# 用电管理终端平台产品开发计划1

Schedule from MS Project, 2009-12-01 to 2010-03-12.
番茄花园

## Calendars

- 标准: Mon-Fri 08:00-12:00, 13:00-17:00; Sat-Sun off.

## Resources

| Resource |
| --- |
| 万鸿俊 |
| 路冉冉 |
| 左伟杰 |
| 孙锐 |
| 仪表 |
| 温博 |

## Schedule

| ID | WBS | Task | Duration | Start | Finish | Predecessors | Total slack | Free slack | Constraint | Resources | Work | Text25 |
| --- | --- | --- | --- | --- | --- | --- | --- | --- | --- | --- | --- | --- |
| 1 | 1 | **SGE800平台开发计划** | 74d? | 2009-12-01 | 2010-03-12 |  | 0d |  |  |  | 3896h |  |
| 2 | 1.1 | **硬件** | 74d | 2009-12-01 | 2010-03-12 |  | 0d |  |  |  | 1312h |  |
| 3 | 1.1.1 | **cpu板** | 34d | 2009-12-01 | 2010-01-15 |  | 40d |  |  |  | 176h |  |
| 4 | 1.1.1.1 | 整理重写设计需求说明书 | 5d | 2010-01-11 | 2010-01-15 |  | 40d |  | finish no earlier than 2010-01-15 | 万鸿俊 | 40h | 文档 |
| 5 | 1.1.1.2 | 原理图与PCB图 | 1d | 2009-12-01 | 2009-12-01 |  | 57d | 0d | finish no earlier than 2009-12-01 | 温博 | 8h | 图纸 |
| 6 | 1.1.1.3 | 制作与调试 | 16d | 2009-12-02 | 2009-12-23 | 5, 3 | 57d |  | finish no earlier than 2009-12-23 | 温博 | 128h |  |
| 7 | 1.1.2 | **主板** | 34d | 2009-12-01 | 2010-01-15 |  | 40d |  |  |  | 176h |  |
| 8 | 1.1.2.1 | 整理重写设计需求说明书 | 5d | 2010-01-11 | 2010-01-15 |  | 40d |  | finish no earlier than 2010-01-15 | 万鸿俊 | 40h | 文档 |
| 9 | 1.1.2.2 | 原理图与PCB图 | 1d | 2009-12-01 | 2009-12-01 |  | 57d | 0d | finish no earlier than 2009-12-01 | 温博 | 8h | 图纸 |
| 10 | 1.1.2.3 | 制作与调试 | 16d | 2009-12-02 | 2009-12-23 | 9 | 57d |  | start no earlier than 2009-12-01 | 温博 | 128h |  |
| 11 | 1.1.3 | **测试** | 70d | 2009-12-07 | 2010-03-12 |  | 0d |  |  |  | 920h |  |
| 12 | 1.1.3.1 | **cpu板测试** | 70d | 2009-12-07 | 2010-03-12 |  | 0d |  |  |  | 680h |  |
| 13 | 1.1.3.1.1 | 测试工装需求说明书 | 15d | 2009-12-07 | 2009-12-25 |  | 55d |  | finish no earlier than 2009-12-25 | 左伟杰 | 120h | 文档 |
| 14 | 1.1.3.1.2 | 测试工装原理图和PCB图 | 10d | 2010-01-18 | 2010-01-29 |  | 30d |  | finish no earlier than 2010-01-29 | 左伟杰 | 80h | 图纸 |
| 15 | 1.1.3.1.3 | cpu板测试工装测试报告 | 30d | 2010-02-01 | 2010-03-12 |  | 0d |  | finish no earlier than 2010-03-12 | 左伟杰 | 240h | 文档 |
| 16 | 1.1.3.1.4 | cpu板硬件测试报告 | 30d | 2010-02-01 | 2010-03-12 |  | 0d |  | finish no earlier than 2010-03-12 | 左伟杰 | 240h | 文档 |
| 17 | 1.1.3.2 | **主板测试** | 30d | 2010-02-01 | 2010-03-12 |  | 0d |  |  |  | 240h |  |
| 18 | 1.1.3.2.1 | 测试报告 | 30d | 2010-02-01 | 2010-03-12 |  | 0d |  | finish no earlier than 2010-03-12 | 左伟杰 | 240h | 文档 |
| 19 | 1.1.4 | 硬件设计总结报告 | 5d | 2010-02-01 | 2010-02-05 |  | 25d |  | finish no earlier than 2010-02-05 | 万鸿俊 | 40h |  |
| 20 | 1.2 | **软件** | 49d | 2009-12-01 | 2010-02-05 |  | 25d |  |  |  | 1944h |  |
| 21 | 1.2.1 | **系统软件** | 34d | 2009-12-01 | 2010-01-15 |  | 40d |  |  |  | 224h |  |
| 22 | 1.2.1.1 | **操作系统平台** | 34d | 2009-12-01 | 2010-01-15 |  | 40d |  |  |  | 96h |  |
| 23 | 1.2.1.1.1 | 操作系统平台移植和设计 | 1d | 2009-12-01 | 2009-12-01 |  | 73d |  | finish no earlier than 2009-12-01 | 万鸿俊; 路冉冉 | 16h |  |
| 24 | 1.2.1.1.2 | 操作系统平台设计说明书 | 5d | 2010-01-11 | 2010-01-15 |  | 40d |  | finish no earlier than 2010-01-15 | 万鸿俊; 路冉冉 | 80h | 文档 |

| ID | WBS | Task | Duration | Start | Finish | Total slack | Constraint | Resources | Work | Text25 |
| --- | --- | --- | --- | --- | --- | --- | --- | --- | --- | --- |
| 25 | 1.2.1.2 | **硬件驱动** | 34d | 2009-12-01 | 2010-01-15 | 40d |  |  | 128h |  |
| 26 | 1.2.1.2.1 | 设计需求说明书 | 5d | 2010-01-11 | 2010-01-15 | 40d | finish no earlier than 2010-01-15 | 路冉冉 | 40h | 文档 |
| 27 | 1.2.1.2.2 | 详细设计说明书 | 5d | 2010-01-11 | 2010-01-15 | 40d | finish no earlier than 2010-01-15 | 路冉冉 | 40h | 文档 |
| 28 | 1.2.1.2.3 | 编码 | 1d | 2009-12-01 | 2009-12-01 | 73d | finish no earlier than 2009-12-01 | 路冉冉 | 8h | 源码 |
| 29 | 1.2.1.2.4 | 接口说明书 | 5d | 2010-01-11 | 2010-01-15 | 40d | finish no earlier than 2010-01-15 | 路冉冉 | 40h | 文档 |
| 30 | 1.2.2 | **二次开发函数库** | 30d | 2009-12-07 | 2010-01-15 | 40d |  |  | 1680h |  |
| 31 | 1.2.2.1 | 设计需求说明书 | 10d | 2009-12-07 | 2009-12-18 | 60d | start no earlier than 2009-12-07 | 万鸿俊 | 80h | 文档 |
| 32 | 1.2.2.2 | 概要设计说明书 | 10d | 2009-12-07 | 2009-12-18 | 60d | start no earlier than 2009-12-07 | 万鸿俊 | 80h | 文档 |
| 33 | 1.2.2.3 | 详细设计说明书 | 10d | 2009-12-07 | 2009-12-18 | 60d | start no earlier than 2009-12-07 | 万鸿俊 | 80h | 文档 |
| 34 | 1.2.2.4 | **编码** | 20d | 2009-12-21 | 2010-01-15 | 40d |  |  | 1440h |  |
| 35 | 1.2.2.4.1 | 硬件操作开发包 | 20d | 2009-12-21 | 2010-01-15 | 40d | finish no earlier than 2010-01-15 | 路冉冉 | 160h | 源码 |
| 36 | 1.2.2.4.2 | 串口 | 20d | 2009-12-21 | 2010-01-15 | 40d | finish no earlier than 2010-01-15 | 路冉冉 | 160h | 源码 |
| 37 | 1.2.2.4.3 | USB从口 | 20d | 2009-12-21 | 2010-01-15 | 40d | finish no earlier than 2010-01-15 | 路冉冉 | 160h | 源码 |
| 38 | 1.2.2.4.4 | 网络 | 20d | 2009-12-21 | 2010-01-15 | 40d | finish no earlier than 2010-01-15 | 孙锐 | 160h | 源码 |
| 39 | 1.2.2.4.5 | 数据库 | 20d | 2009-12-21 | 2010-01-15 | 40d | finish no earlier than 2010-01-15 | 孙锐 | 160h | 源码 |
| 40 | 1.2.2.4.6 | 线程同步 | 20d | 2009-12-21 | 2010-01-15 | 40d | finish no earlier than 2010-01-15 | 孙锐 | 160h | 源码 |
| 41 | 1.2.2.4.7 | 线程操作 | 20d | 2009-12-21 | 2010-01-15 | 40d | finish no earlier than 2010-01-15 | 万鸿俊 | 160h | 源码 |
| 42 | 1.2.2.4.8 | 消息服务 | 20d | 2009-12-21 | 2010-01-15 | 40d | finish no earlier than 2010-01-15 | 万鸿俊 | 160h | 源码 |
| 43 | 1.2.2.4.9 | 文件 | 20d | 2009-12-21 | 2010-01-15 | 40d | finish no earlier than 2010-01-15 | 万鸿俊 | 160h | 源码 |
| 44 | 1.2.3 | 测试 | 11d | 2010-01-18 | 2010-02-01 | 29d | start no earlier than 2010-01-18 |  |  |  |
| 45 | 1.2.4 | 软件设计总结报告 | 5d | 2010-02-01 | 2010-02-05 | 25d | finish no earlier than 2010-02-05 | 万鸿俊 | 40h | 文档 |
| 46 | 1.3 | cpu板数据手册（含硬件说明、开发环境、接口说明等） | 20d | 2010-01-18 | 2010-02-12 | 20d | finish no earlier than 2010-02-12 | 左伟杰; 孙锐; 万鸿俊 | 480h | 文档 |
| 47 | 1.4 | 主板使用说明书 | 20d? | 2010-01-18 | 2010-02-12 | 20d | finish no earlier than 2010-02-12 | 左伟杰 | 160h | 文档 |
